# TestPlan_updated

Schedule from MS Project, 2019-01-14 to 2019-04-14, A marks actual dates.

## Calendars

- ProjectCalender: Mon-Sun 08:00-12:00, 13:00-17:00.

## Resources

| Resource |
| --- |
| Project Manager |
| Tech Lead |
| Documentation Expert |
| Manual Tester |
| Automation Tester |
| Usability Tester |

## Schedule

| ID | WBS | Task | Type | Duration | Start | Finish | Predecessors | Complete | Constraint | Resources | Work | Actual work |
| --- | --- | --- | --- | --- | --- | --- | --- | --- | --- | --- | --- | --- |
| 1 | 1 | **Capstone Project** |  | 90d | 2019-01-14 A | 2019-04-14 A |  | 100% |  |  | 1728h | 1728h |
| 2 | 1.1 | **Project Kickoff** |  | 5d | 2019-01-14 A | 2019-01-18 A |  | 100% |  |  |  |  |
| 3 | 1.1.1 | Business agreement |  | 3d | 2019-01-14 A | 2019-01-16 A |  | 100% | start no earlier than 2019-01-14 |  |  |  |
| 4 | 1.1.2 | Sponsor approval |  | 2d | 2019-01-17 A | 2019-01-18 A | 3 | 100% |  |  |  |  |
| 5 | 1.2 | **Requirement Analysis** |  | 9d | 2019-01-19 A | 2019-01-27 A |  | 100% |  |  | 168h | 168h |
| 6 | 1.2.1 | Prepare Meeting Agenda |  | 1d | 2019-01-19 A | 2019-01-19 A | 4 | 100% |  | Documentation Expert; Project Manager | 16h | 16h |
| 7 | 1.2.2 | Team Formation and major roles |  | 1d | 2019-01-20 A | 2019-01-20 A | 6 | 100% |  | Automation Tester; Documentation Expert; Manual Tester; Project Manager; Tech Lead; Usability Tester | 48h | 48h |
| 8 | 1.2.3 | Business etiquette for team |  | 1d | 2019-01-22 A | 2019-01-22 A | 7 | 100% |  | Project Manager; Tech Lead; Automation Tester; Documentation Expert; Manual Tester; Usability Tester | 48h | 48h |
| 9 | 1.2.4 | Gathering technical requirements |  | 2d | 2019-01-23 A | 2019-01-24 A | 8 | 100% |  | Project Manager; Tech Lead | 32h | 32h |
| 10 | 1.2.5 | Gathering business requirements |  | 2d | 2019-01-25 A | 2019-01-26 A | 9 | 100% |  | Project Manager | 16h | 16h |
| 11 | 1.2.6 | Prepare IAD log | milestone | 1d | 2019-01-27 A | 2019-01-27 A | 10 | 100% |  | Documentation Expert | 8h | 8h |
| 12 | 1.3 | **Test Planning** |  | 14d | 2019-01-28 A | 2019-02-10 A |  | 100% |  |  | 328h | 328h |
| 13 | 1.3.1 | Prepare Meeting Agenda |  | 1d | 2019-01-28 A | 2019-01-28 A | 11 | 100% |  | Project Manager; Documentation Expert | 16h | 16h |
| 14 | 1.3.2 | Assign Test roles and responsibilities |  | 1d | 2019-02-01 A | 2019-02-01 A | 13 | 100% |  | Project Manager | 8h | 8h |
| 15 | 1.3.3 | Gathering Training requirements |  | 1d | 2019-02-02 A | 2019-02-02 A | 14 | 100% |  | Project Manager; Tech Lead | 16h | 16h |
| 16 | 1.3.4 | Test Strategy Draft formation |  | 5d | 2019-01-29 A | 2019-02-02 A | 13SS | 100% | finish no later than 2019-02-02 | Automation Tester; Manual Tester; Usability Tester | 120h | 120h |
| 17 | 1.3.5 | Test Strategy | milestone, manual | 0d | 2019-02-03 A | 2019-02-03 A | 16 | 100% | start no earlier than 2019-02-03 | Documentation Expert |  |  |
| 18 | 1.3.6 | Automation feasibility Analysis |  | 2d | 2019-02-03 A | 2019-02-04 A | 17 | 100% |  | Automation Tester | 16h | 16h |
| 19 | 1.3.7 | Test Plan formation |  | 4d | 2019-02-05 A | 2019-02-08 A | 18 | 100% |  | Automation Tester; Documentation Expert; Manual Tester; Usability Tester | 128h | 128h |
| 20 | 1.3.8 | Gathering Milestone due dates |  | 1d | 2019-02-09 A | 2019-02-09 A | 19 | 100% |  | Documentation Expert; Project Manager | 16h | 16h |
| 21 | 1.3.9 | Test Plan Draft | milestone, manual | 0d | 2019-02-10 A | 2019-02-10 A | 20 | 100% | start no earlier than 2019-02-10 |  |  |  |
| 22 | 1.3.10 | Prepare IAD log |  | 1d | 2019-02-10 A | 2019-02-10 A | 21 | 100% |  | Documentation Expert | 8h | 8h |
| 23 | 1.4 | **Test Case Development** |  | 24d | 2019-02-11 A | 2019-03-06 A |  | 100% |  |  | 408h | 408h |
| 24 | 1.4.1 | Prepare Meeting Agenda |  | 1d | 2019-02-11 A | 2019-02-11 A | 22 | 100% |  | Documentation Expert; Project Manager; Tech Lead | 24h | 24h |
| 25 | 1.4.2 | Derive test requirements |  | 3d | 2019-02-12 A | 2019-02-14 A | 24 | 100% |  | Automation Tester; Manual Tester; Tech Lead; Usability Tester | 96h | 96h |
| 26 | 1.4.3 | Design test procedure |  | 2d | 2019-02-15 A | 2019-02-16 A | 25 | 100% |  | Automation Tester; Manual Tester; Tech Lead; Usability Tester | 64h | 64h |
| 27 | 1.4.4 | Decide scope of test |  | 2d | 2019-02-17 A | 2019-02-18 A | 26 | 100% |  | Tech Lead | 16h | 16h |
| 28 | 1.4.5 | Design Test Cases |  | 5d | 2019-02-19 A | 2019-02-23 A | 27 | 100% |  | Manual Tester; Tech Lead; Usability Tester | 120h | 120h |
| 29 | 1.4.6 | Test Cases | milestone, manual | 0d | 2019-02-24 A | 2019-02-24 A |  | 100% |  |  |  |  |
| 30 | 1.4.7 | Design Test Scripts |  | 4d | 2019-02-24 A | 2019-02-27 A | 28 | 100% |  | Automation Tester | 32h | 32h |
| 31 | 1.4.8 | Gather baseline data |  | 3d | 2019-02-28 A | 2019-03-02 A | 30 | 100% | finish no earlier than 2019-02-24 | Manual Tester | 24h | 24h |
| 32 | 1.4.9 | Gather Test data |  | 3d | 2019-03-03 A | 2019-03-05 A | 31 | 100% |  | Usability Tester | 24h | 24h |
| 33 | 1.4.10 | Prepare IAD log |  | 1d | 2019-03-06 A | 2019-03-06 A | 32 | 100% |  | Documentation Expert | 8h | 8h |

| ID | WBS | Task | Type | Duration | Start | Finish | Predecessors | Complete | Constraint | Resources | Work | Actual work |
| --- | --- | --- | --- | --- | --- | --- | --- | --- | --- | --- | --- | --- |
| 34 | 1.5 | **Environment Setup** |  | 13d | 2019-02-25 A | 2019-03-10 A |  | 100% |  |  | 288h | 288h |
| 35 | 1.5.1 | Meeting Agenda |  | 1d | 2019-02-25 A | 2019-02-25 A | 28FS+1d | 100% |  | Documentation Expert; Tech Lead | 16h | 16h |
| 36 | 1.5.2 | **Technical Seup** |  | 12d | 2019-02-26 A | 2019-03-10 A |  | 100% |  |  | 272h | 272h |
| 37 | 1.5.2.1 | **Tools** |  | 12d | 2019-02-26 A | 2019-03-10 A |  | 100% |  |  | 272h | 272h |
| 38 | 1.5.2.1.1 | Install Eclipse IDE and Java |  | 2d | 2019-02-26 A | 2019-02-27 A | 35 | 100% |  | Automation Tester; Usability Tester; Documentation Expert | 48h | 48h |
| 39 | 1.5.2.1.2 | Install Apache Tomcat |  | 2d | 2019-02-28 A | 2019-03-01 A | 38 | 100% |  | Automation Tester; Usability Tester; Documentation Expert | 48h | 48h |
| 40 | 1.5.2.1.3 | Install Selenium IDE, Webdriver |  | 1d | 2019-03-02 A | 2019-03-02 A | 39 | 100% |  | Automation Tester; Usability Tester; Documentation Expert | 24h | 24h |
| 41 | 1.5.2.1.4 | Install Backlog (bug tracking tool) |  | 1d | 2019-03-03 A | 2019-03-03 A | 40 | 100% |  | Automation Tester; Usability Tester; Documentation Expert | 24h | 24h |
| 42 | 1.5.2.1.5 | Install Firefox browser for Selenium plugin |  | 1d | 2019-03-04 A | 2019-03-04 A | 41 | 100% |  | Automation Tester; Usability Tester; Documentation Expert | 24h | 24h |
| 43 | 1.5.2.1.6 | Install SQL |  | 2d | 2019-03-05 A | 2019-03-06 A | 42 | 100% |  | Automation Tester; Usability Tester; Documentation Expert | 48h | 48h |
| 44 | 1.5.2.1.7 | Perform Smoke Test |  | 2d | 2019-03-07 A | 2019-03-08 A | 43 | 100% |  | Automation Tester; Usability Tester; Documentation Expert | 48h | 48h |
| 45 | 1.5.2.1.8 | Prepare IAD log |  | 1d | 2019-03-09 A | 2019-03-09 A | 44 | 100% |  | Documentation Expert | 8h | 8h |
| 46 | 1.5.2.1.9 | Test Scenarios/Scripts | milestone, manual | 0d | 2019-03-10 A | 2019-03-10 A | 33, 45 | 100% |  |  |  |  |
| 47 | 1.6 | **Test Execution** |  | 27d | 2019-03-11 A | 2019-04-07 A |  | 100% |  |  | 464h | 464h |
| 48 | 1.6.1 | **Cycle 1** |  | 9d | 2019-03-11 A | 2019-03-19 A |  | 100% |  |  | 136h | 136h |
| 49 | 1.6.1.1 | Installation and Configuration test |  | 1d | 2019-03-11 A | 2019-03-11 A | 45FS+1d | 100% |  | Automation Tester; Manual Tester | 16h | 16h |
| 50 | 1.6.1.2 | Conduct Usability test |  | 2d | 2019-03-12 A | 2019-03-13 A | 49 | 100% |  | Usability Tester | 16h | 16h |
| 51 | 1.6.1.3 | Conduct Performance test |  | 1d | 2019-03-14 A | 2019-03-14 A | 50 | 100% |  | Manual Tester | 8h | 8h |
| 52 | 1.6.1.4 | Conduct Non-functional testing |  | 1d | 2019-03-15 A | 2019-03-15 A | 51 | 100% |  | Manual Tester; Usability Tester | 16h | 16h |
| 53 | 1.6.1.5 | Conduct functional testing |  | 2d | 2019-03-16 A | 2019-03-17 A | 52 | 100% |  | Manual Tester; Usability Tester | 32h | 32h |
| 54 | 1.6.1.6 | Conduct accessibility testing |  | 2d | 2019-03-18 A | 2019-03-19 A | 53 | 100% |  | Automation Tester; Manual Tester; Usability Tester | 48h | 48h |
| 55 | 1.6.2 | **Cycle 2** |  | 11d | 2019-03-20 A | 2019-03-30 A |  | 100% |  |  | 120h | 120h |
| 56 | 1.6.2.1 | Conduct Regression testing |  | 3d | 2019-03-20 A | 2019-03-22 A | 54 | 100% |  | Automation Tester | 24h | 24h |
| 57 | 1.6.2.2 | Update test cases |  | 4d | 2019-03-23 A | 2019-03-26 A | 56 | 100% |  | Automation Tester | 32h | 32h |
| 58 | 1.6.2.3 | Record Test Results |  | 4d | 2019-03-27 A | 2019-03-30 A | 57 | 100% |  | Automation Tester; Manual Tester | 64h | 64h |
| 59 | 1.6.3 | Assign Pass/Fail and Severity Levels |  | 3d | 2019-03-31 A | 2019-04-02 A | 58 | 100% |  | Automation Tester; Manual Tester | 48h | 48h |
| 60 | 1.6.4 | Prepare Defect Report |  | 4d | 2019-04-03 A | 2019-04-06 A | 59 | 100% |  | Automation Tester; Documentation Expert; Manual Tester; Usability Tester | 128h | 128h |
| 61 | 1.6.5 | Prepare Performance report |  | 4d | 2019-04-03 A | 2019-04-06 A | 60 | 100% | must finish on 2019-04-06 | Documentation Expert | 32h | 32h |
| 62 | 1.6.6 | Test Execution Reporting | milestone, manual | 0d | 2019-04-07 A | 2019-04-07 A | 61 | 100% |  |  |  |  |

| ID | WBS | Task | Type | Duration | Start | Finish | Predecessors | Complete | Constraint | Resources | Work | Actual work |
| --- | --- | --- | --- | --- | --- | --- | --- | --- | --- | --- | --- | --- |
| 63 | 1.7 | **Project Closure** |  | 7d | 2019-04-07 A | 2019-04-14 A |  | 100% |  |  | 72h | 72h |
| 64 | 1.7.1 | Sponsor review and approval |  | 1d | 2019-04-07 A | 2019-04-07 A | 62 | 100% | must start on 2019-04-07 | Project Manager | 8h | 8h |
| 65 | 1.7.2 | Lessons Learnt |  | 2d | 2019-04-07 A | 2019-04-08 A | 64SS | 100% |  | Documentation Expert | 16h | 16h |
| 66 | 1.7.3 | Prepare Final Presentation |  | 3d | 2019-04-09 A | 2019-04-11 A | 65 | 100% |  | Documentation Expert; Project Manager | 48h | 48h |
| 67 | 1.7.4 | Final Presentation - Closing and Sign off | milestone, manual | 0d | 2019-04-14 A | 2019-04-14 A | 66 | 100% | start no earlier than 2019-04-14 |  |  |  |
